# 东科 Vth -1V

Schedule from a web Gantt chart, 2025-09-29 to 2026-02-11.
Saturdays and Sundays are off

## Schedule

| ID | WBS | Task | Duration | Start | Finish | Predecessors | Complete | Status |
| --- | --- | --- | --- | --- | --- | --- | --- | --- |
| 2 | 1 | **1st Learning Cycle** | 98d | 2025-09-29 | 2026-02-11 |  | 1% |  |
| 3 | 1.1 | kick-off | 1d | 2025-09-29 | 2025-09-29 |  | 100% |  |
| 4 | 1.2 | 项目立项会议 | 1d | 2025-10-13 | 2025-10-13 |  |  |  |
| 5 | 1.3 | W/S | 30d | 2025-09-29 | 2025-11-07 |  |  |  |
| 6 | 1.4 | F/O | 3d | 2025-11-10 | 2025-11-12 | 5 |  | waiting |
| 7 | 1.5 | samples | 35d | 2025-11-13 | 2025-12-31 | 6 |  | waiting |
| 8 | 1.6 | RE 1000H | 30d | 2026-01-01 | 2026-02-11 | 7 |  | waiting |
